# Projekt Zvijer

Schedule from MS Project, 2014-03-03 to 2014-06-26, costs in kn.
Programsko rješenje za vođenje autoškole

## Calendars

- Standard: Mon-Sun 08:00-12:00, 13:00-17:00. Exceptions (off unless hours are given): 2014-04-20 (Uskrs), 2014-04-21 (Uskršni ponedjeljak), 2014-05-01 (Praznik rada), 2014-06-19 (Tijelovo), 2014-06-22 (Dan antifašističke borbe), 2014-06-25 (Dan državnosti).

## Resources

| Resource | Rate |
| --- | --- |
| Zvonimir Carek | 50 |
| Ana Marija Cazin | 50 |
| Leko Leonard | 50 |
| Mislav Šantek | 50 |
| Dragana Von Milkota | 50 |
| Tomislav Zdunić | 50 |
| Računalo | 20 |

## Schedule

| ID | WBS | Task | Type | Duration | Start | Finish | Predecessors | Total slack | Free slack | Constraint | Resources | Work | Cost |
| --- | --- | --- | --- | --- | --- | --- | --- | --- | --- | --- | --- | --- | --- |
| 1 | 1 | **Zvijer** |  | 109d | 2014-03-03 08:00 | 2014-06-26 08:00 |  | 0d |  |  |  | 568.1h | 30,405 |
| 2 | 1.1 | POČETAK PROJEKTA | milestone | 0d | 2014-03-03 08:00 | 2014-03-03 08:00 |  | 109d |  | start no earlier than 2014-03-03 08:00 |  |  |  |
| 3 | 1.2 | **Planiranje projekta** |  | 32.06d | 2014-03-04 08:00 | 2014-04-05 08:30 |  | 73.19d |  |  |  | 47.5h | 2,715 |
| 4 | 1.2.1 | Definiranje projektnog tima |  | 2h | 2014-03-04 08:00 | 2014-03-04 10:00 | 2 | 99.44d | 1.75d | start no earlier than 2014-03-04 08:00 | Zvonimir Carek | 2h | 100 |
| 5 | 1.2.2 | 1. sastanak tima |  | 1h | 2014-03-06 08:00 | 2014-03-06 09:00 | 4 | 101.81d | 0d | start no earlier than 2014-03-06 08:00 | Zvonimir Carek; Ana Marija Cazin; Leko Leonard; Dragana Von Milkota; Mislav Šantek; Tomislav Zdunić | 6h | 300 |
| 6 | 1.2.3 | Raspodjela aktivnosti unutar tima |  | 0.5h | 2014-03-06 09:00 | 2014-03-06 09:30 | 5 | 97.69d | 0d | start no earlier than 2014-03-06 08:00 | Zvonimir Carek; Ana Marija Cazin; Dragana Von Milkota; Mislav Šantek; Leko Leonard; Tomislav Zdunić | 3h | 150 |
| 7 | 1.2.4 | Odabir metoda I alata za izradu projekta |  | 0.5h | 2014-03-06 09:30 | 2014-03-06 10:00 | 6 | 97.69d | 0d | start no earlier than 2014-03-06 08:00 | Zvonimir Carek; Ana Marija Cazin; Leko Leonard; Dragana Von Milkota; Mislav Šantek; Tomislav Zdunić | 3h | 150 |
| 8 | 1.2.5 | Određivanje ključnih točaka projekta |  | 1h | 2014-03-06 10:00 | 2014-03-06 11:00 | 7 | -0.06d | 0d | start no earlier than 2014-03-06 08:00 | Zvonimir Carek; Dragana Von Milkota; Ana Marija Cazin; Leko Leonard; Mislav Šantek; Tomislav Zdunić | 3.5h | 175 |
| 9 | 1.2.6 | Izrada gantograma |  | 4h | 2014-03-15 08:00 | 2014-03-15 12:00 | 8 | 93.19d | 0d | start no earlier than 2014-03-15 08:00 | Ana Marija Cazin; Računalo [300%]; Leko Leonard; Tomislav Zdunić | 11h | 610 |
| 10 | 1.2.7 | Izrada proračuna I financija |  | 3h | 2014-03-15 13:00 | 2014-03-15 16:00 | 9 | 92.94d | 13.12d |  | Ana Marija Cazin; Računalo | 3h | 170 |
| 11 | 1.2.8 | Izrada ponude naručitelju |  | 1h | 2014-03-29 08:00 | 2014-03-29 09:00 | 10 | 79.81d | 0d | start no earlier than 2014-03-29 08:00 | Ana Marija Cazin; Računalo | 1h | 70 |
| 12 | 1.2.9 | Dovršavanje I uređivanje projekta |  | 2h | 2014-03-29 09:00 | 2014-03-29 11:00 | 11 | 79.81d | 6.62d | start no earlier than 2014-03-28 08:00 | Zvonimir Carek; Ana Marija Cazin; Leko Leonard; Dragana Von Milkota; Mislav Šantek; Tomislav Zdunić; Računalo [600%] | 12h | 720 |
| 13 | 1.2.10 | Sastavljanje početne dokumentacije |  | 0.5h | 2014-04-05 08:00 | 2014-04-05 08:30 | 12 | 73.19d | 0d | start no earlier than 2014-04-05 08:00 | Zvonimir Carek; Ana Marija Cazin; Leko Leonard; Dragana Von Milkota; Mislav Šantek; Tomislav Zdunić; Računalo [600%] | 3h | 270 |
| 14 | 1.3 | ZAVRŠETAK PLANIRANJA | milestone | 0d | 2014-04-05 08:30 | 2014-04-05 08:30 | 13 | 73.19d | 4.94d | start no earlier than 2014-04-04 08:00 |  |  |  |
| 15 | 1.4 | **Modeliranje projekta** |  | 26.38d | 2014-04-10 08:00 | 2014-05-09 11:00 |  | 44.62d |  |  |  | 58h | 3,220 |
| 16 | 1.4.1 | 2. sastanak tima |  | 2h | 2014-04-10 08:00 | 2014-04-10 10:00 | 14 | 68.25d | 0d | start no earlier than 2014-04-10 08:00 | Zvonimir Carek; Ana Marija Cazin; Leko Leonard; Dragana Von Milkota; Mislav Šantek; Tomislav Zdunić | 12h | 600 |
| 17 | 1.4.2 | Opisi I specifijakcije korisničkih zahtjeva |  | 1h | 2014-04-10 10:00 | 2014-04-10 11:00 | 16 | 64.12d | 6.62d | start no earlier than 2014-04-10 08:00 | Mislav Šantek; Zvonimir Carek; Računalo [200%] | 2h | 140 |
| 18 | 1.4.3 | **UML** |  | 3d | 2014-04-17 08:00 | 2014-04-19 17:00 |  | 60.12d |  |  |  | 28h | 1,480 |
| 19 | 1.4.3.1 | Izrada UseCase dijagrama |  | 4h | 2014-04-17 08:00 | 2014-04-17 12:00 | 17 | 61.62d | 1.5d | start no earlier than 2014-04-17 08:00 | Dragana Von Milkota; Računalo | 4h | 220 |
| 20 | 1.4.3.2 | Izrada Class dijagrama |  | 1d | 2014-04-19 08:00 | 2014-04-19 17:00 | 19 | 60.12d | 6d | start no earlier than 2014-04-19 08:00 | Tomislav Zdunić; Računalo [300%]; Mislav Šantek; Zvonimir Carek | 24h | 1,260 |
| 21 | 1.4.4 | PRVA PROVJERA PROJEKTA |  | 0.12d | 2014-04-28 08:00 | 2014-04-28 09:00 | 20 | 54.12d | 2.88d | start no earlier than 2014-04-28 08:00 |  |  |  |
| 22 | 1.4.5 | **Modeliranje baze podataka** |  | 7.38d | 2014-05-02 08:00 | 2014-05-09 11:00 |  | 44.62d | 0d |  |  | 16h | 1,000 |
| 23 | 1.4.5.1 | Dovršavanje I uređivanje napravljenog |  | 1h | 2014-05-02 08:00 | 2014-05-02 09:00 | 21 | 51.25d | 0d | start no earlier than 2014-05-02 08:00 | Zvonimir Carek; Ana Marija Cazin; Leko Leonard; Dragana Von Milkota; Mislav Šantek; Tomislav Zdunić; Računalo [600%] | 6h | 420 |
| 24 | 1.4.5.2 | Generiranje SQL skripte |  | 2h | 2014-05-02 09:00 | 2014-05-02 11:00 | 23 | 51.25d | 6.62d | start no earlier than 2014-05-02 08:00 | Mislav Šantek; Leko Leonard; Računalo [200%] | 4h | 240 |
| 25 | 1.4.5.3 | Izrada idejnih skica forme |  | 3h | 2014-05-09 08:00 | 2014-05-09 11:00 | 24 | 44.62d |  | start no earlier than 2014-05-09 08:00 | Tomislav Zdunić; Dragana Von Milkota; Računalo [200%] | 6h | 340 |
| 26 | 1.4.6 | MODELIRANJE BP ZAVRŠENO | milestone | 0d | 2014-05-09 11:00 | 2014-05-09 11:00 | 22 | 44.62d |  | start no earlier than 2014-05-09 08:00 |  |  |  |
| 27 | 1.5 | MODELIRANJE ZAVRŠENO | milestone | 0d | 2014-05-09 08:00 | 2014-05-09 08:00 |  | 35.34d | 6d | start no earlier than 2014-05-09 08:00 |  |  |  |

| ID | WBS | Task | Type | Duration | Start | Finish | Predecessors | Total slack | Free slack | Constraint | Resources | Work | Cost |
| --- | --- | --- | --- | --- | --- | --- | --- | --- | --- | --- | --- | --- | --- |
| 28 | 1.6 | **Realizacija projekta** |  | 12d | 2014-05-15 08:00 | 2014-05-26 17:00 |  | 26.6d | 0d |  |  | 444.6h | 23,550 |
| 29 | 1.6.1 | 3. sastanak tima |  | 2h | 2014-05-15 08:00 | 2014-05-15 10:00 | 27 | 29.34d | 0d | start no earlier than 2014-05-15 08:00 | Zvonimir Carek; Ana Marija Cazin; Dragana Von Milkota; Leko Leonard; Mislav Šantek; Tomislav Zdunić; Računalo [600%] | 12h | 720 |
| 30 | 1.6.2 | Definiranje problemske domene |  | 2h | 2014-05-15 10:00 | 2014-05-15 12:00 | 29 | 29.34d | 0d | start no earlier than 2014-05-15 08:00 | Zvonimir Carek; Ana Marija Cazin; Dragana Von Milkota; Leko Leonard; Mislav Šantek; Tomislav Zdunić; Računalo [600%] | 12h | 720 |
| 31 | 1.6.3 | Izbor metode za rješavanje problema |  | 0.5h | 2014-05-15 13:00 | 2014-05-15 13:30 | 30 | 29.34d | 1.44d | start no earlier than 2014-05-15 08:00 | Zvonimir Carek; Ana Marija Cazin; Dragana Von Milkota; Leko Leonard; Mislav Šantek; Tomislav Zdunić; Računalo [600%] | 3h | 270 |
| 32 | 1.6.4 | Osmišljavanje algoritma I koda |  | 0.2d | 2014-05-17 08:00 | 2014-05-17 09:36 | 31 | 27.9d | 0d | start no earlier than 2014-05-17 08:00 | Mislav Šantek; Leko Leonard; Tomislav Zdunić; Zvonimir Carek; Ana Marija Cazin; Dragana Von Milkota; Računalo [600%] | 9.6h | 600 |
| 33 | 1.6.5 | Izrada programskog koda |  | 3d | 2014-05-17 09:36 | 2014-05-20 09:36 | 32 | 27.9d | 0d |  | Mislav Šantek; Leko Leonard; Računalo [600%]; Ana Marija Cazin; Dragana Von Milkota; Zvonimir Carek; Tomislav Zdunić | 144h | 7,320 |
| 34 | 1.6.6 | Testiranje programskih kodova |  | 1.5d | 2014-05-20 09:36 | 2014-05-21 14:36 | 33 | 27.9d | 0.3d | start no earlier than 2014-05-20 08:00 | Zvonimir Carek; Ana Marija Cazin; Leko Leonard; Dragana Von Milkota; Mislav Šantek; Tomislav Zdunić; Računalo [600%] | 72h | 3,720 |
| 35 | 1.6.7 | 4. sastanka tima |  | 2h | 2014-05-22 08:00 | 2014-05-22 10:00 | 34 | 27.6d | 0d | start no earlier than 2014-05-22 08:00 | Zvonimir Carek; Ana Marija Cazin; Leko Leonard; Dragana Von Milkota; Mislav Šantek; Tomislav Zdunić; Računalo [600%] | 12h | 720 |
| 36 | 1.6.8 | Pregled aplikacije |  | 7h | 2014-05-22 10:00 | 2014-05-23 09:00 | 35 | 27.6d | 0d | start no earlier than 2014-05-22 08:00 | Zvonimir Carek; Leko Leonard; Ana Marija Cazin; Dragana Von Milkota; Mislav Šantek; Tomislav Zdunić; Računalo [600%] | 42h | 2,220 |
| 37 | 1.6.9 | Popravljanje I dorada aplikacije |  | 4h | 2014-05-23 09:00 | 2014-05-23 14:00 | 36 | 27.6d | 0d | start no earlier than 2014-05-22 08:00 | Leko Leonard; Mislav Šantek; Računalo [600%]; Ana Marija Cazin; Dragana Von Milkota; Tomislav Zdunić; Zvonimir Carek | 24h | 1,320 |
| 38 | 1.6.10 | Završno testiranje programskih kodova |  | 3h | 2014-05-23 14:00 | 2014-05-23 17:00 | 37 | 27.6d | 1d | start no earlier than 2014-04-26 08:00 | Zvonimir Carek; Leko Leonard; Ana Marija Cazin; Dragana Von Milkota; Mislav Šantek; Tomislav Zdunić; Računalo [600%] | 18h | 1,020 |
| 39 | 1.6.11 | Izrada konačne dokumentacije projekta |  | 2d | 2014-05-25 08:00 | 2014-05-26 17:00 | 38 | 26.6d |  | start no earlier than 2014-05-25 08:00 | Zvonimir Carek; Ana Marija Cazin; Leko Leonard; Dragana Von Milkota; Mislav Šantek; Tomislav Zdunić; Računalo [600%] | 96h | 4,920 |
| 40 | 1.7 | REALIZACIJA ZAVRŠENA | milestone | 0d | 2014-05-26 17:00 | 2014-05-26 17:00 | 28 | 26.6d | 20d | start no earlier than 2014-04-28 08:00 |  |  |  |
| 41 | 1.8 | **Isporuka** |  | 5.12d | 2014-06-16 08:00 | 2014-06-23 09:00 |  | 1.88d |  |  |  | 18h | 920 |
| 42 | 1.8.1 | Isporučenje aplikacije |  | 10min | 2014-06-16 08:00 | 2014-06-16 08:10 | 40 | 6.6d | 2.98d | start no earlier than 2014-06-16 08:00 |  |  |  |
| 43 | 1.8.2 | 5. sastanak tima |  | 2h | 2014-06-20 08:00 | 2014-06-20 10:00 | 42 | 3.62d | 1.75d | start no earlier than 2014-06-20 08:00 | Zvonimir Carek; Ana Marija Cazin; Leko Leonard; Dragana Von Milkota; Mislav Šantek; Tomislav Zdunić | 12h | 600 |
| 44 | 1.8.3 | Javna obrana projekta |  | 1h | 2014-06-23 08:00 | 2014-06-23 09:00 | 43 | 1.88d |  | start no earlier than 2014-06-23 08:00 | Zvonimir Carek; Ana Marija Cazin; Leko Leonard; Dragana Von Milkota; Mislav Šantek; Tomislav Zdunić; Računalo | 6h | 320 |
| 45 | 1.9 | PROJEKT ZAVRŠEN | milestone | 0d | 2014-06-26 08:00 | 2014-06-26 08:00 | 44 | 0d |  | start no earlier than 2014-06-26 08:00 |  |  |  |
